# Planificiacion_temporal_TFG_AngelTorijano

Schedule from MS Project, 2024-05-30 to 2024-09-04.

## Calendars

- Estándar: Mon-Sat 09:00-13:00, 15:00-19:00; Sun off.

## Resources

| Resource |
| --- |
| Ángel Torijano Sexmero |
| Pablo N. Garayoa de Nova |
| Testers |

## Schedule

| ID | WBS | Task | Type | Duration | Start | Finish | Predecessors | Total slack | Free slack | Constraint | Resources | Work |
| --- | --- | --- | --- | --- | --- | --- | --- | --- | --- | --- | --- | --- |
| 1 | 1 | **Inicio del Proyecto** |  | 84d? | 2024-05-30 09:00 | 2024-09-04 19:00 |  | 0d |  |  |  | 741.6h |
| 2 | 1.1 | **Inicio** |  | 7d | 2024-05-30 09:00 | 2024-06-06 19:00 |  | 0.5d | 0d |  |  | 56h |
| 3 | 1.1.1 | **Iteración 1** |  | 7d | 2024-05-30 09:00 | 2024-06-06 19:00 |  | 0.5d | 0d |  |  | 56h |
| 4 | 1.1.1.1 | **Modelo de negocio** |  | 3.5d | 2024-05-30 09:00 | 2024-06-03 13:00 |  | 0.5d |  |  |  | 28h |
| 5 | 1.1.1.1.1 | Investigación sobre entornos de trabajo |  | 1.5d | 2024-05-30 09:00 | 2024-05-31 13:00 |  | 0.5d | 0d |  | Ángel Torijano Sexmero | 12h |
| 6 | 1.1.1.1.2 | Investigación sobre elementos rítmicos en videojuegos |  | 2d | 2024-05-31 15:00 | 2024-06-03 13:00 | 5 | 0.5d | 0d |  | Ángel Torijano Sexmero | 16h |
| 7 | 1.1.1.2 | **Requisitos** |  | 1d | 2024-06-03 15:00 | 2024-06-04 13:00 |  | 0.5d |  |  |  | 8h |
| 8 | 1.1.1.2.1 | Identificación de actores |  | 0.5d | 2024-06-03 15:00 | 2024-06-03 19:00 | 6 | 0.5d | 0d | start no earlier than 2024-06-03 15:00 | Ángel Torijano Sexmero | 4h |
| 9 | 1.1.1.2.2 | Identificación de objetivos |  | 0.5d | 2024-06-04 09:00 | 2024-06-04 13:00 | 8 | 0.5d | 0d |  | Ángel Torijano Sexmero | 4h |
| 10 | 1.1.1.3 | **Análisis** |  | 0.5d | 2024-06-04 15:00 | 2024-06-04 19:00 |  | 0.5d |  |  |  | 4h |
| 11 | 1.1.1.3.1 | Análisis y selección de entornos de desarrollo |  | 0.5d | 2024-06-04 15:00 | 2024-06-04 19:00 | 9 | 0.5d | 0d |  | Ángel Torijano Sexmero | 4h |
| 12 | 1.1.1.4 | **Implementación** |  | 0.5d | 2024-06-05 09:00 | 2024-06-05 13:00 |  | 0.5d |  |  |  | 4h |
| 13 | 1.1.1.4.1 | Instalación del entorno de desarrollo |  | 0.5d | 2024-06-05 09:00 | 2024-06-05 13:00 | 11 | 0.5d | 0d |  | Ángel Torijano Sexmero | 4h |
| 14 | 1.1.1.5 | **Pruebas** |  | 1.5d | 2024-06-05 15:00 | 2024-06-06 19:00 |  | 0.5d |  |  |  | 12h |
| 15 | 1.1.1.5.1 | Busqueda de plantillas del entorno de desarrollo |  | 0.2d | 2024-06-05 15:00 | 2024-06-05 16:36 | 13 | 0.5d | 0d |  | Ángel Torijano Sexmero | 1.6h |
| 16 | 1.1.1.5.2 | Realización de pruebas sobre el entorno de desarolllo |  | 1.3d | 2024-06-05 16:36 | 2024-06-06 19:00 | 15 | 0.5d | 0d |  | Ángel Torijano Sexmero | 10.4h |
| 17 | 1.1.2 | Fin de iteración | milestone | 0d | 2024-06-06 19:00 | 2024-06-06 19:00 | 16, 3 | 0.5d | 0d |  |  |  |
| 18 | 1.2 | Fin de fase de Inicio | milestone | 0d | 2024-06-06 19:00 | 2024-06-06 19:00 | 17, 2 | 0.5d | 0d |  |  |  |
| 19 | 1.3 | **Desarrollo** |  | 71.5d? | 2024-06-07 09:00 | 2024-08-29 13:00 | 18 | 0d |  |  |  | 641.6h |
| 20 | 1.3.1 | **Sprint 1** |  | 14d | 2024-06-07 09:00 | 2024-06-22 19:00 |  | 0.5d |  |  |  | 128h |
| 21 | 1.3.1.1 | **Modelo de negocio** |  | 0.5d | 2024-06-07 09:00 | 2024-06-07 13:00 |  | 0.5d |  |  |  | 8h |
| 22 | 1.3.1.1.1 | Reunión con el equipo |  | 0.25d | 2024-06-07 09:00 | 2024-06-07 11:00 |  | 0.5d | 0d |  | Ángel Torijano Sexmero; Pablo N. Garayoa de Nova | 4h |
| 23 | 1.3.1.1.2 | Planificación del sprint y selección de tareas |  | 0.25d | 2024-06-07 11:00 | 2024-06-07 13:00 | 22 | 0.5d | 0d |  | Ángel Torijano Sexmero; Pablo N. Garayoa de Nova | 4h |
| 24 | 1.3.1.2 | **Requisitos** |  | 4.5d | 2024-06-07 15:00 | 2024-06-12 19:00 |  | 0.5d |  |  |  | 36h |
| 25 | 1.3.1.2.1 | Identificación de requisitos de informacion |  | 1d | 2024-06-07 15:00 | 2024-06-08 13:00 | 23 | 0.5d | 0d |  | Ángel Torijano Sexmero | 8h |
| 26 | 1.3.1.2.2 | Identificación de requisitos no funcionales |  | 0.5d | 2024-06-08 15:00 | 2024-06-08 19:00 | 25 | 0.5d | 0d |  | Ángel Torijano Sexmero | 4h |
| 27 | 1.3.1.2.3 | Identificación de requisitos funcionales |  | 1d | 2024-06-10 09:00 | 2024-06-10 19:00 | 26 | 0.5d | 0d |  | Ángel Torijano Sexmero | 8h |
| 28 | 1.3.1.2.4 | Identificación de casos de uso relacionados con la base del videojuego |  | 1d | 2024-06-11 09:00 | 2024-06-11 19:00 | 27 | 0.5d | 0d |  | Ángel Torijano Sexmero | 8h |
| 29 | 1.3.1.2.5 | Identificación de casos de uso relacionados con los componentes rítmicos |  | 1d | 2024-06-12 09:00 | 2024-06-12 19:00 | 28 | 0.5d | 0d |  | Ángel Torijano Sexmero | 8h |

| ID | WBS | Task | Type | Duration | Start | Finish | Predecessors | Total slack | Free slack | Resources | Work |
| --- | --- | --- | --- | --- | --- | --- | --- | --- | --- | --- | --- |
| 30 | 1.3.1.3 | **Análisis** |  | 0.5d | 2024-06-13 09:00 | 2024-06-13 13:00 |  | 0.5d |  |  | 4h |
| 31 | 1.3.1.3.1 | Análsis de posibles diseños generales para el juego |  | 0.25d | 2024-06-13 09:00 | 2024-06-13 11:00 | 29 | 0.5d | 0d | Ángel Torijano Sexmero | 2h |
| 32 | 1.3.1.3.2 | Analísis de tipos de componentes rítmicos |  | 0.25d | 2024-06-13 11:00 | 2024-06-13 13:00 | 31 | 0.5d | 0d | Ángel Torijano Sexmero | 2h |
| 33 | 1.3.1.4 | **Diseño** |  | 3.5d | 2024-06-13 15:00 | 2024-06-17 19:00 |  | 0.5d |  |  | 28h |
| 34 | 1.3.1.4.1 | Realización de los casos de uso relacionados con la creación de la base del videojuego |  | 1d | 2024-06-13 15:00 | 2024-06-14 13:00 | 32 | 0.5d | 0d | Ángel Torijano Sexmero | 8h |
| 35 | 1.3.1.4.2 | Primeros bocetos del personaje principal |  | 0.5d | 2024-06-14 15:00 | 2024-06-14 19:00 | 34 | 0.5d | 0d | Ángel Torijano Sexmero | 4h |
| 36 | 1.3.1.4.3 | Diseño del sprite del personaje principal |  | 0.5d | 2024-06-15 09:00 | 2024-06-15 13:00 | 35 | 0.5d | 0d | Ángel Torijano Sexmero | 4h |
| 37 | 1.3.1.4.4 | Diseño de animaciones básicas del personaje |  | 1.5d | 2024-06-15 15:00 | 2024-06-17 19:00 | 36 | 0.5d | 0d | Ángel Torijano Sexmero | 12h |
| 38 | 1.3.1.5 | **Implementación** |  | 6.5d | 2024-06-13 15:00 | 2024-06-20 19:00 |  | 0.5d |  |  | 36h |
| 39 | 1.3.1.5.1 | Primera demo de la música del juego |  | 3d | 2024-06-13 15:00 | 2024-06-17 13:00 | 32 | 3d | 2.5d | Pablo N. Garayoa de Nova [50%] | 12h |
| 40 | 1.3.1.5.2 | Implementacion del mapa de pruebas |  | 0.5d | 2024-06-18 09:00 | 2024-06-18 13:00 | 37 | 0.5d | 0d | Ángel Torijano Sexmero | 4h |
| 41 | 1.3.1.5.3 | Implementación del personaje |  | 0.5d | 2024-06-18 15:00 | 2024-06-18 19:00 | 40 | 0.5d | 0d | Ángel Torijano Sexmero | 4h |
| 42 | 1.3.1.5.4 | Implementación del movimiento básico |  | 1d | 2024-06-19 09:00 | 2024-06-19 19:00 | 41 | 0.5d | 0d | Ángel Torijano Sexmero | 8h |
| 43 | 1.3.1.5.5 | Implementación del componente rítmico |  | 1d | 2024-06-20 09:00 | 2024-06-20 19:00 | 39, 42 | 0.5d | 0d | Ángel Torijano Sexmero | 8h |
| 44 | 1.3.1.6 | **Pruebas** |  | 1.5d | 2024-06-21 09:00 | 2024-06-22 13:00 |  | 0.5d |  |  | 12h |
| 45 | 1.3.1.6.1 | Testeo de movimiento basico y correccion de errores |  | 1.5d | 2024-06-21 09:00 | 2024-06-22 13:00 | 43 | 0.5d | 0d | Ángel Torijano Sexmero | 12h |
| 46 | 1.3.1.7 | **Revision del Sprint** |  | 0.5d | 2024-06-22 15:00 | 2024-06-22 19:00 |  | 0.5d |  |  | 4h |
| 47 | 1.3.1.7.1 | Análisis del Sprint |  | 0.5d | 2024-06-22 15:00 | 2024-06-22 19:00 | 45 | 0.5d | 0d | Ángel Torijano Sexmero | 4h |
| 48 | 1.3.2 | Fin de Sprint 1 | milestone | 0d | 2024-06-22 19:00 | 2024-06-22 19:00 | 47 | 0.5d | 0d |  |  |
| 49 | 1.3.3 | **Sprint 2** |  | 10d | 2024-06-24 09:00 | 2024-07-04 19:00 | 48 | 0.5d |  |  | 76h |
| 50 | 1.3.3.1 | **Modelo de negocio** |  | 0.5d | 2024-06-24 09:00 | 2024-06-24 13:00 |  | 0.5d |  |  | 4h |
| 51 | 1.3.3.1.1 | Planificación del sprint y selección de tareas |  | 0.5d | 2024-06-24 09:00 | 2024-06-24 13:00 |  | 0.5d | 0d | Ángel Torijano Sexmero | 4h |
| 52 | 1.3.3.2 | **Requisitos** |  | 1.5d | 2024-06-24 15:00 | 2024-06-25 19:00 |  | 0.5d |  |  | 12h |
| 53 | 1.3.3.2.1 | Reevaluación de requisitos |  | 0.5d | 2024-06-24 15:00 | 2024-06-24 19:00 | 51 | 0.5d | 0d | Ángel Torijano Sexmero | 4h |
| 54 | 1.3.3.2.2 | Identificación de casos de uso en referencia a los componentes ritmicos |  | 1d | 2024-06-25 09:00 | 2024-06-25 19:00 | 53 | 0.5d | 0d | Ángel Torijano Sexmero | 8h |

| ID | WBS | Task | Type | Duration | Start | Finish | Predecessors | Total slack | Free slack | Constraint | Resources | Work |
| --- | --- | --- | --- | --- | --- | --- | --- | --- | --- | --- | --- | --- |
| 55 | 1.3.3.3 | **Análisis** |  | 1d | 2024-06-26 09:00 | 2024-06-26 19:00 |  | 0.5d |  |  |  | 8h |
| 56 | 1.3.3.3.1 | Análsis de posibles habilidades del jugador |  | 0.5d | 2024-06-26 09:00 | 2024-06-26 13:00 | 54 | 0.5d | 0d |  | Ángel Torijano Sexmero | 4h |
| 57 | 1.3.3.3.2 | Analísis de métodos para controlar el timing de las acciones del jugador |  | 0.5d | 2024-06-26 15:00 | 2024-06-26 19:00 | 56 | 0.5d | 0d |  | Ángel Torijano Sexmero | 4h |
| 58 | 1.3.3.4 | **Diseño** |  | 2d | 2024-06-27 09:00 | 2024-06-28 19:00 |  | 0.5d |  |  |  | 12h |
| 59 | 1.3.3.4.1 | Realización de los casos de uso relacionados con los componentes rítmicos |  | 1d | 2024-06-27 09:00 | 2024-06-27 19:00 | 57 | 0.5d | 0d |  | Ángel Torijano Sexmero | 8h |
| 60 | 1.3.3.4.2 | Diseño del la primera habilidad |  | 0.5d | 2024-06-28 09:00 | 2024-06-28 13:00 | 59 | 0.5d | 0d |  | Ángel Torijano Sexmero |  |
| 61 | 1.3.3.4.3 | Diseño de animaciones de la habilidad |  | 0.5d | 2024-06-28 15:00 | 2024-06-28 19:00 | 60 | 0.5d | 0d |  | Ángel Torijano Sexmero | 4h |
| 62 | 1.3.3.5 | **Implementación** |  | 2d | 2024-06-29 09:00 | 2024-07-01 19:00 |  | 0.5d |  |  |  | 16h |
| 63 | 1.3.3.5.1 | Implementacion del modo Cancíón |  | 1d | 2024-06-29 09:00 | 2024-06-29 19:00 | 61 | 0.5d | 0d |  | Ángel Torijano Sexmero | 8h |
| 64 | 1.3.3.5.2 | Implementación de la primera habilidad |  | 1d | 2024-07-01 09:00 | 2024-07-01 19:00 | 63 | 0.5d | 0d |  | Ángel Torijano Sexmero | 8h |
| 65 | 1.3.3.6 | **Pruebas** |  | 2d | 2024-07-02 09:00 | 2024-07-03 19:00 |  | 0.5d |  |  |  | 16h |
| 66 | 1.3.3.6.1 | Testeo del modo canción |  | 2d | 2024-07-02 09:00 | 2024-07-03 19:00 | 64 | 0.5d | 0d |  | Ángel Torijano Sexmero | 16h |
| 67 | 1.3.3.7 | **Revision del Sprint** |  | 1d | 2024-07-04 09:00 | 2024-07-04 19:00 |  | 0.5d |  |  |  | 8h |
| 68 | 1.3.3.7.1 | Análisis del Sprint |  | 0.5d | 2024-07-04 09:00 | 2024-07-04 13:00 | 66 | 0.5d | 0d |  | Ángel Torijano Sexmero | 4h |
| 69 | 1.3.3.7.2 | Reunión con el cliente (tutor) |  | 0.5d | 2024-07-04 15:00 | 2024-07-04 19:00 | 68 | 0.5d | 0d | start no earlier than 2024-06-06 08:00 | Ángel Torijano Sexmero | 4h |
| 70 | 1.3.4 | Fin de Sprint 2 | milestone | 0d | 2024-07-04 19:00 | 2024-07-04 19:00 | 69 | 0.5d | 0d |  | Ángel Torijano Sexmero |  |
| 71 | 1.3.5 | **Sprint 3** |  | 12d? | 2024-07-05 09:00 | 2024-07-18 19:00 |  | 0.5d |  |  |  | 130.4h |
| 72 | 1.3.5.1 | **Modelo de negocio** |  | 1d | 2024-07-05 09:00 | 2024-07-05 19:00 |  | 0.5d |  |  |  | 16h |
| 73 | 1.3.5.1.1 | Planificación del sprint y selección de tareas |  | 0.5d | 2024-07-05 09:00 | 2024-07-05 13:00 | 70 | 0.5d | 0d |  | Pablo N. Garayoa de Nova; Ángel Torijano Sexmero | 8h |
| 74 | 1.3.5.1.2 | Reunión del equipo |  | 0.5d | 2024-07-05 15:00 | 2024-07-05 19:00 | 73 | 0.5d | 0d |  | Pablo N. Garayoa de Nova; Ángel Torijano Sexmero | 8h |
| 75 | 1.3.5.2 | **Requisitos** |  | 1.5d | 2024-07-06 09:00 | 2024-07-08 13:00 |  | 0.5d |  |  |  | 12h |
| 76 | 1.3.5.2.1 | Reevaluación de requisitos |  | 0.5d | 2024-07-06 09:00 | 2024-07-06 13:00 | 74 | 0.5d | 0d |  | Ángel Torijano Sexmero | 4h |
| 77 | 1.3.5.2.2 | Identificación de casos de uso en referencia a la gestión de vida |  | 1d | 2024-07-06 15:00 | 2024-07-08 13:00 | 76 | 0.5d | 0d |  | Ángel Torijano Sexmero | 8h |
| 78 | 1.3.5.3 | **Análisis** |  | 1d | 2024-07-08 15:00 | 2024-07-09 13:00 |  | 0.5d |  |  |  | 8h |
| 79 | 1.3.5.3.1 | Análsis de elementos que puedan interactuar con las habilidades |  | 1d | 2024-07-08 15:00 | 2024-07-09 13:00 | 77 | 0.5d | 0d |  | Ángel Torijano Sexmero | 8h |

| ID | WBS | Task | Type | Duration | Start | Finish | Predecessors | Total slack | Free slack | Constraint | Resources | Work |
| --- | --- | --- | --- | --- | --- | --- | --- | --- | --- | --- | --- | --- |
| 80 | 1.3.5.4 | **Diseño** |  | 10d? | 2024-07-06 09:00 | 2024-07-17 19:00 |  | 3d |  |  |  | 58.4h |
| 81 | 1.3.5.4.1 | Diseño del la segunda habilidad |  | 1d | 2024-07-09 15:00 | 2024-07-10 13:00 | 79 | 0.5d | 0d |  | Ángel Torijano Sexmero | 8h |
| 82 | 1.3.5.4.2 | Diseño de efectos visuales |  | 1d | 2024-07-10 15:00 | 2024-07-11 13:00 | 81 | 0.5d | 0d |  | Ángel Torijano Sexmero | 8h |
| 83 | 1.3.5.4.3 | Diseño de animaciones de la habilidad |  | 2d | 2024-07-11 15:00 | 2024-07-13 13:00 | 82 | 0.5d | 0d |  | Ángel Torijano Sexmero | 16h |
| 84 | 1.3.5.4.4 | Diseño de sonidos |  | 10d? | 2024-07-06 09:00 | 2024-07-17 19:00 | 74 | 20.5d |  |  | Pablo N. Garayoa de Nova [33%] | 26.4h |
| 85 | 1.3.5.5 | **Implementación** |  | 2d | 2024-07-13 15:00 | 2024-07-16 13:00 |  | 0.5d |  |  |  | 16h |
| 86 | 1.3.5.5.1 | Implementacion de efectos visuales |  | 1d | 2024-07-13 15:00 | 2024-07-15 13:00 | 83 | 0.5d | 0d |  | Ángel Torijano Sexmero | 8h |
| 87 | 1.3.5.5.2 | Implementación de la segunda habilidad |  | 1d | 2024-07-15 15:00 | 2024-07-16 13:00 | 86 | 0.5d | 0d |  | Ángel Torijano Sexmero | 8h |
| 88 | 1.3.5.6 | **Pruebas** |  | 1.5d | 2024-07-16 15:00 | 2024-07-17 19:00 |  | 0.5d |  |  |  | 12h |
| 89 | 1.3.5.6.1 | Testeo del modo canción |  | 1.5d | 2024-07-16 15:00 | 2024-07-17 19:00 | 87 | 0.5d | 0d |  | Ángel Torijano Sexmero | 12h |
| 90 | 1.3.5.7 | **Revision del Sprint** |  | 1d | 2024-07-18 09:00 | 2024-07-18 19:00 |  | 0.5d |  |  |  | 8h |
| 91 | 1.3.5.7.1 | Análisis del Sprint |  | 1d | 2024-07-18 09:00 | 2024-07-18 19:00 | 89 | 0.5d | 0d |  | Ángel Torijano Sexmero | 8h |
| 92 | 1.3.6 | Fin de Sprint 3 | milestone | 0d | 2024-07-18 19:00 | 2024-07-18 19:00 | 91 | 0.5d | 0d |  |  |  |
| 93 | 1.3.7 | **Sprint 4** |  | 12d | 2024-07-19 09:00 | 2024-08-01 19:00 |  | 0d |  |  |  | 100h |
| 94 | 1.3.7.1 | **Modelo de negocio** |  | 1.5d | 2024-07-19 09:00 | 2024-07-20 13:00 |  | 0d |  |  |  | 16h |
| 95 | 1.3.7.1.1 | Planificación del sprint y selección de tareas |  | 0.5d | 2024-07-19 09:00 | 2024-07-19 13:00 | 92 | 0.5d |  |  | Ángel Torijano Sexmero; Pablo N. Garayoa de Nova | 8h |
| 96 | 1.3.7.1.2 | Reunión del equipo |  | 0.5d | 2024-07-20 09:00 | 2024-07-20 13:00 | 95 | 0d |  | start no earlier than 2024-07-20 08:00 | Ángel Torijano Sexmero; Pablo N. Garayoa de Nova | 8h |
| 97 | 1.3.7.2 | **Requisitos** |  | 1.5d | 2024-07-20 15:00 | 2024-07-22 19:00 |  | 0d |  |  |  | 12h |
| 98 | 1.3.7.2.1 | Reevaluación de requisitos |  | 0.5d | 2024-07-20 15:00 | 2024-07-20 19:00 | 96 | 0d |  |  | Ángel Torijano Sexmero | 4h |
| 99 | 1.3.7.2.2 | Identificación de casos de uso referentes a las puntuaciones |  | 1d | 2024-07-22 09:00 | 2024-07-22 19:00 | 98 | 0d |  |  | Ángel Torijano Sexmero | 8h |
| 100 | 1.3.7.3 | **Análisis** |  | 1d | 2024-07-23 09:00 | 2024-07-23 19:00 |  | 0d |  |  |  | 8h |
| 101 | 1.3.7.3.1 | Análsis de elementos dinámicos del juego |  | 0.5d | 2024-07-23 09:00 | 2024-07-23 13:00 | 99 | 0d |  |  | Ángel Torijano Sexmero | 4h |
| 102 | 1.3.7.3.2 | Analísis de métodos de representacion de la salud |  | 0.5d | 2024-07-23 15:00 | 2024-07-23 19:00 | 101 | 0d |  |  | Ángel Torijano Sexmero | 4h |
| 103 | 1.3.7.4 | **Diseño** |  | 2.5d | 2024-07-24 09:00 | 2024-07-26 13:00 |  | 0d |  |  |  | 20h |
| 104 | 1.3.7.4.1 | Realización de los casos de uso relacionados con la gestión de salud |  | 1d | 2024-07-24 09:00 | 2024-07-24 19:00 | 102 | 0d |  |  | Ángel Torijano Sexmero | 8h |
| 105 | 1.3.7.4.2 | Diseño del HUD |  | 0.5d | 2024-07-25 09:00 | 2024-07-25 13:00 | 104 | 0d |  |  | Ángel Torijano Sexmero | 4h |
| 106 | 1.3.7.4.3 | Diseño de la barra de salud |  | 0.5d | 2024-07-25 15:00 | 2024-07-25 19:00 | 105 | 0d |  |  | Ángel Torijano Sexmero | 4h |
| 107 | 1.3.7.4.4 | Diseño de botones para los menus |  | 0.5d | 2024-07-26 09:00 | 2024-07-26 13:00 | 106 | 0d |  |  | Ángel Torijano Sexmero | 4h |

| ID | WBS | Task | Type | Duration | Start | Finish | Predecessors | Total slack | Constraint | Resources | Work |
| --- | --- | --- | --- | --- | --- | --- | --- | --- | --- | --- | --- |
| 108 | 1.3.7.5 | **Implementación** |  | 3.5d | 2024-07-26 15:00 | 2024-07-30 19:00 |  | 0d |  |  | 28h |
| 109 | 1.3.7.5.1 | Implementación del fondo del nivel |  | 0.5d | 2024-07-26 15:00 | 2024-07-26 19:00 | 107 | 0d |  | Ángel Torijano Sexmero | 4h |
| 110 | 1.3.7.5.2 | Implementación de barra de salud |  | 1d | 2024-07-27 09:00 | 2024-07-27 19:00 | 109 | 0d |  | Ángel Torijano Sexmero | 8h |
| 111 | 1.3.7.5.3 | Implementación de zonas de muerte y reaparición |  | 1d | 2024-07-29 09:00 | 2024-07-29 19:00 | 110 | 0d |  | Ángel Torijano Sexmero | 8h |
| 112 | 1.3.7.5.4 | Implementación de menus |  | 1d | 2024-07-30 09:00 | 2024-07-30 19:00 | 111 | 0d |  | Ángel Torijano Sexmero | 8h |
| 113 | 1.3.7.6 | **Pruebas** |  | 1d | 2024-07-31 09:00 | 2024-07-31 19:00 |  | 0d |  |  | 8h |
| 114 | 1.3.7.6.1 | Preparación del primer prototipo |  | 1d | 2024-07-31 09:00 | 2024-07-31 19:00 | 112 | 0d |  | Ángel Torijano Sexmero | 8h |
| 115 | 1.3.7.7 | **Revision del Sprint** |  | 1d | 2024-08-01 09:00 | 2024-08-01 19:00 |  | 0d |  |  | 8h |
| 116 | 1.3.7.7.1 | Analisis del Sprint |  | 0.5d | 2024-08-01 09:00 | 2024-08-01 13:00 | 114 | 0d |  | Ángel Torijano Sexmero | 4h |
| 117 | 1.3.7.7.2 | Reunión con el cliente (tutor) |  | 0.5d | 2024-08-01 15:00 | 2024-08-01 19:00 | 116 | 0d |  | Ángel Torijano Sexmero | 4h |
| 118 | 1.3.8 | Fin de Sprint 4 | milestone | 0d | 2024-08-01 19:00 | 2024-08-01 19:00 | 117 | 0d | start no earlier than 2024-08-01 08:00 |  |  |
| 119 | 1.3.9 | **Sprint 5** |  | 12d? | 2024-08-02 09:00 | 2024-08-15 19:00 |  | 0d |  |  | 118.4h |
| 120 | 1.3.9.1 | **Modelo de negocio** |  | 3.5d? | 2024-08-02 09:00 | 2024-08-06 13:00 |  | 0d |  |  | 10.4h |
| 121 | 1.3.9.1.1 | Planificación del sprint y selección de tareas |  | 0.5d | 2024-08-02 09:00 | 2024-08-02 13:00 | 118 | 0d |  | Ángel Torijano Sexmero; Pablo N. Garayoa de Nova | 8h |
| 122 | 1.3.9.1.2 | Presentación a los testers del prototipo |  | 3d? | 2024-08-02 15:00 | 2024-08-06 13:00 | 121 | 0.5d |  | Testers [10%] | 2.4h |
| 123 | 1.3.9.2 | **Requisitos** |  | 0.5d | 2024-08-02 15:00 | 2024-08-02 19:00 |  | 0d |  |  | 4h |
| 124 | 1.3.9.2.1 | Reevaluación de requisitos |  | 0.5d | 2024-08-02 15:00 | 2024-08-02 19:00 | 121 | 0d |  | Ángel Torijano Sexmero | 4h |
| 125 | 1.3.9.3 | **Análisis** |  | 1d | 2024-08-03 09:00 | 2024-08-03 19:00 |  | 0d |  |  | 8h |
| 126 | 1.3.9.3.1 | Análisis de bases de datos para almacenamiento en la nube de puntuaciones |  | 0.5d | 2024-08-03 09:00 | 2024-08-03 13:00 | 124 | 0d |  | Ángel Torijano Sexmero | 4h |
| 127 | 1.3.9.3.2 | Analísis de diseño de paginas web para mostrar las puntuaciones |  | 0.5d | 2024-08-03 15:00 | 2024-08-03 19:00 | 126 | 0d |  | Ángel Torijano Sexmero | 4h |
| 128 | 1.3.9.4 | **Diseño** |  | 3.5d? | 2024-08-05 09:00 | 2024-08-08 13:00 |  | 0d |  |  | 40h |
| 129 | 1.3.9.4.1 | Realización de los casos de uso relacionados con la gestión de puntuación |  | 1d | 2024-08-05 09:00 | 2024-08-05 19:00 | 127 | 0d |  | Ángel Torijano Sexmero | 8h |
| 130 | 1.3.9.4.2 | Diseño de coleccionables |  | 0.5d | 2024-08-06 09:00 | 2024-08-06 13:00 | 129 | 0d |  | Ángel Torijano Sexmero | 4h |
| 131 | 1.3.9.4.3 | Diseño de menús |  | 0.5d | 2024-08-06 15:00 | 2024-08-06 19:00 | 130 | 0d |  | Ángel Torijano Sexmero | 4h |
| 132 | 1.3.9.4.4 | Diseño de elementos requeridos por los testers |  | 1.5d? | 2024-08-07 09:00 | 2024-08-08 13:00 | 131, 122 | 0d |  | Ángel Torijano Sexmero; Testers | 24h |

| ID | WBS | Task | Type | Duration | Start | Finish | Predecessors | Total slack | Constraint | Resources | Work |
| --- | --- | --- | --- | --- | --- | --- | --- | --- | --- | --- | --- |
| 133 | 1.3.9.5 | **Implementación** |  | 4.5d | 2024-08-08 15:00 | 2024-08-13 19:00 |  | 0d |  |  | 40h |
| 134 | 1.3.9.5.1 | Implementación de coleccionables |  | 1d | 2024-08-08 15:00 | 2024-08-09 13:00 | 132 | 0d |  | Ángel Torijano Sexmero | 8h |
| 135 | 1.3.9.5.2 | Implementación de menús |  | 1d | 2024-08-09 15:00 | 2024-08-10 13:00 | 134 | 0d |  | Ángel Torijano Sexmero | 8h |
| 136 | 1.3.9.5.3 | Implementación de sonidos |  | 0.5d | 2024-08-10 15:00 | 2024-08-10 19:00 | 135, 84 | 0d |  | Pablo N. Garayoa de Nova; Ángel Torijano Sexmero | 8h |
| 137 | 1.3.9.5.4 | Implementación de bases de datos |  | 2d | 2024-08-12 09:00 | 2024-08-13 19:00 | 136 | 0d |  | Ángel Torijano Sexmero | 16h |
| 138 | 1.3.9.6 | **Pruebas** |  | 1.5d | 2024-08-14 09:00 | 2024-08-15 13:00 |  | 0d |  |  | 12h |
| 139 | 1.3.9.6.1 | Pruebas sobre las bases de datos en la nube |  | 1d | 2024-08-14 09:00 | 2024-08-14 19:00 | 137 | 0d |  | Ángel Torijano Sexmero | 8h |
| 140 | 1.3.9.6.2 | Preparación del segundo prototipo |  | 0.5d | 2024-08-15 09:00 | 2024-08-15 13:00 | 139 | 0d |  | Ángel Torijano Sexmero | 4h |
| 141 | 1.3.9.7 | **Revision del Sprint** |  | 0.5d | 2024-08-15 15:00 | 2024-08-15 19:00 |  | 0d |  |  | 4h |
| 142 | 1.3.9.7.1 | Análisis del Sprint |  | 0.5d | 2024-08-15 15:00 | 2024-08-15 19:00 | 140 | 0d |  | Ángel Torijano Sexmero | 4h |
| 143 | 1.3.10 | Fin de Sprint 5 | milestone | 0d | 2024-08-15 19:00 | 2024-08-15 19:00 | 142 | 0d | start no earlier than 2024-08-15 08:00 |  |  |
| 144 | 1.3.11 | **Sprint 6** |  | 11.5d? | 2024-08-16 09:00 | 2024-08-29 13:00 |  | 0d |  |  | 88.8h |
| 145 | 1.3.11.1 | **Modelo de negocio** |  | 3.5d? | 2024-08-16 09:00 | 2024-08-20 13:00 |  | 0d |  |  | 6.4h |
| 146 | 1.3.11.1.1 | Planificación del sprint y selección de tareas |  | 0.5d | 2024-08-16 09:00 | 2024-08-16 13:00 | 143 | 0d |  | Ángel Torijano Sexmero | 4h |
| 147 | 1.3.11.1.2 | Presentación a los testers del prototipo |  | 3d? | 2024-08-16 15:00 | 2024-08-20 13:00 | 146 | 0.5d |  | Testers [10%] | 2.4h |
| 148 | 1.3.11.2 | **Requisitos** |  | 0.5d | 2024-08-16 15:00 | 2024-08-16 19:00 |  | 0d |  |  | 4h |
| 149 | 1.3.11.2.1 | Reevaluación de requisitos |  | 0.5d | 2024-08-16 15:00 | 2024-08-16 19:00 | 146 | 0d |  | Ángel Torijano Sexmero | 4h |
| 150 | 1.3.11.3 | **Análisis** |  | 0.5d | 2024-08-17 09:00 | 2024-08-17 13:00 |  | 0d |  |  | 4h |
| 151 | 1.3.11.3.1 | Análisis de creación de niveles |  | 0.5d | 2024-08-17 09:00 | 2024-08-17 13:00 | 149 | 0d |  | Ángel Torijano Sexmero | 4h |
| 152 | 1.3.11.4 | **Diseño** |  | 3.5d | 2024-08-17 15:00 | 2024-08-21 19:00 |  | 0d |  |  | 28.8h |
| 153 | 1.3.11.4.1 | Diseño de tutoriales |  | 1d | 2024-08-17 15:00 | 2024-08-19 13:00 | 151 | 0d |  | Ángel Torijano Sexmero | 8h |
| 154 | 1.3.11.4.2 | Diseño del marcador de ritmo |  | 0.5d | 2024-08-19 15:00 | 2024-08-19 19:00 | 153 | 0d |  | Ángel Torijano Sexmero | 4h |
| 155 | 1.3.11.4.3 | Diseño de enemigos |  | 1d | 2024-08-20 09:00 | 2024-08-20 19:00 | 154 | 0d |  | Ángel Torijano Sexmero | 8h |
| 156 | 1.3.11.4.4 | Diseño de elementos requeridos por los testers |  | 1d | 2024-08-21 09:00 | 2024-08-21 19:00 | 155, 147 | 0d |  | Ángel Torijano Sexmero; Testers [10%] | 8.8h |

| ID | WBS | Task | Type | Duration | Start | Finish | Predecessors | Total slack | Resources | Work |
| --- | --- | --- | --- | --- | --- | --- | --- | --- | --- | --- |
| 157 | 1.3.11.5 | **Implementación** |  | 3d | 2024-08-22 09:00 | 2024-08-24 19:00 |  | 0d |  | 24h |
| 158 | 1.3.11.5.1 | Implementación de enemigos |  | 1d | 2024-08-22 09:00 | 2024-08-22 19:00 | 156 | 0d | Ángel Torijano Sexmero | 8h |
| 159 | 1.3.11.5.2 | Creación del nivel |  | 2d | 2024-08-23 09:00 | 2024-08-24 19:00 | 158 | 0d | Ángel Torijano Sexmero | 16h |
| 160 | 1.3.11.6 | **Pruebas** |  | 0.5d | 2024-08-26 09:00 | 2024-08-26 13:00 |  | 0d |  | 4h |
| 161 | 1.3.11.6.1 | Creación del último prototipo |  | 0.5d | 2024-08-26 09:00 | 2024-08-26 13:00 | 159 | 0d | Ángel Torijano Sexmero | 4h |
| 162 | 1.3.11.7 | **Revision del Sprint** |  | 3d? | 2024-08-26 15:00 | 2024-08-29 13:00 |  | 0d |  | 17.6h |
| 163 | 1.3.11.7.1 | Presentación del último prototipo |  | 2d | 2024-08-26 15:00 | 2024-08-28 13:00 | 161 | 0d | Testers [10%] | 1.6h |
| 164 | 1.3.11.7.2 | Análisis del Sprint |  | 1d? | 2024-08-26 15:00 | 2024-08-27 13:00 | 161 | 1d | Ángel Torijano Sexmero | 8h |
| 165 | 1.3.11.7.3 | Implementación de elementos requeridos por los testers |  | 1d | 2024-08-28 15:00 | 2024-08-29 13:00 | 163, 164 | 0d | Ángel Torijano Sexmero | 8h |
| 166 | 1.3.12 | Fin de Sprint 6 | milestone | 0d | 2024-08-29 13:00 | 2024-08-29 13:00 | 165 | 0d |  |  |
| 167 | 1.4 | Fin del Desarrollo | milestone | 0d | 2024-08-29 13:00 | 2024-08-29 13:00 | 166 | 0d |  |  |
| 168 | 1.5 | **Revisión y Entrega** |  | 5.5d | 2024-08-29 15:00 | 2024-09-04 19:00 |  | 0d |  | 44h |
| 169 | 1.5.1 | **Iteración 1** |  | 5.5d | 2024-08-29 15:00 | 2024-09-04 19:00 |  | 0d |  | 44h |
| 170 | 1.5.1.1 | **Modelo de negocio** |  | 0.25d | 2024-08-29 15:00 | 2024-08-29 17:00 |  | 0d |  | 2h |
| 171 | 1.5.1.1.1 | Investigar opciones de mercado |  | 0.25d | 2024-08-29 15:00 | 2024-08-29 17:00 | 167 | 0d | Ángel Torijano Sexmero | 2h |
| 172 | 1.5.1.2 | **Análisis** |  | 5d | 2024-08-29 17:00 | 2024-09-04 17:00 |  | 0d |  | 40h |
| 173 | 1.5.1.2.1 | Realización de la documentación |  | 5d | 2024-08-29 17:00 | 2024-09-04 17:00 | 171 | 0d | Ángel Torijano Sexmero | 40h |
| 174 | 1.5.1.3 | **Diseño** |  | 0.25d | 2024-09-04 17:00 | 2024-09-04 19:00 |  | 0d |  | 2h |
| 175 | 1.5.1.3.1 | Diseño del titulo principal |  | 0.25d | 2024-09-04 17:00 | 2024-09-04 19:00 | 173 | 0d | Ángel Torijano Sexmero | 2h |
| 176 | 1.5.2 | Fin de la itreación 1 | milestone | 0d | 2024-09-04 19:00 | 2024-09-04 19:00 | 175 | 0d |  |  |
| 177 | 1.6 | Fin de Revisión y Entrega | milestone | 0d | 2024-09-04 19:00 | 2024-09-04 19:00 | 176 | 0d |  |  |
| 178 | 2 | Fin del Proyetco | milestone | 0d | 2024-09-04 19:00 | 2024-09-04 19:00 | 177 | 0d |  |  |
